# Ms project

Schedule from MS Project, 2021-06-06 to 2021-08-06.
HP

## Calendars

- Standard: Mon-Fri 08:00-12:00, 13:00-17:00; Sat-Sun off. Exceptions (off unless hours are given): 2021-06-06 08:00-12:00, 13:00-17:00, 2021-06-13 08:00-12:00, 13:00-17:00.

## Resources

| Resource |
| --- |
| Osama |
| Mariam |
| Fadi |
| Dana |
| Wafi shafee allah |
| Mohammed |
| Turki |
| Hessa |
| Fatimah |
| Reem |
| Areej |
| Me |

## Schedule

| ID | Task | Type | Duration | Start | Finish | Predecessors | Total slack | Free slack | Constraint | Resources | Work |
| --- | --- | --- | --- | --- | --- | --- | --- | --- | --- | --- | --- |
| 1 | Seekers Team - Fighter robot |  | 47d | 2021-06-06 | 2021-08-06 |  | 0d |  | start no earlier than 2021-06-06 |  |  |
| 2 | Initial the General desgin | milestone | 0d | 2021-06-06 | 2021-06-06 |  | 14d | 1d | start no earlier than 2021-06-06 |  |  |
| 3 | Mechanical |  | 40d | 2021-06-13 | 2021-08-05 |  | 1d |  | start no earlier than 2021-06-13 |  |  |
| 4 | design the End Effector |  | 7d | 2021-06-13 | 2021-06-21 | 28 | 34d |  | start no earlier than 2021-06-13 | Osama; Mariam | 112h |
| 5 | design the arm |  | 7d | 2021-06-13 | 2021-06-21 | 28 | 21d | 0d | start no earlier than 2021-06-13 | Osama; Mariam | 112h |
| 6 | Revesion the task |  | 1d | 2021-06-22 | 2021-06-22 | 5 | 21d | 0d |  | Fadi; Dana | 16h |
| 7 | 3D printing for the End effector and the arm |  | 5d | 2021-06-23 | 2021-06-29 | 6 | 28d |  |  | Osama; Mariam | 80h |
| 8 | design the base |  | 7d | 2021-06-30 | 2021-07-08 | 14, 6 | 16d | 0d | start no earlier than 2021-06-30 | Osama; Mariam | 112h |
| 9 | Use CNC for the base |  | 5d | 2021-07-09 | 2021-07-15 | 8 | 16d |  |  | Osama; Mariam | 80h |
| 10 | revesion the task |  | 1d | 2021-07-16 | 2021-07-16 |  | 11d | 1d | start no earlier than 2021-07-16 | Fadi; Dana | 16h |
| 11 | Electronics |  | 40d | 2021-06-13 | 2021-08-05 |  | 1d |  | start no earlier than 2021-06-13 |  |  |
| 12 | design and implementation the circuit for robot arm |  | 7d | 2021-06-13 | 2021-06-21 | 28 | 13d | 0d | start no earlier than 2021-06-13 | Wafi shafee allah; Mohammed; Turki | 168h |
| 13 | power circuit design for mobile robot and fixid robot |  | 7d | 2021-06-13 | 2021-06-21 | 28 | 21d | 0d | start no earlier than 2021-06-13 | Wafi shafee allah; Mohammed; Turki | 168h |
| 14 | revesion the task |  | 1d | 2021-06-22 | 2021-06-22 | 13 | 21d | 5d |  | Dana; Fadi | 16h |
| 15 | installation |  | 14d | 2021-06-22 | 2021-07-09 | 12 | 13d | 0d |  | Mohammed; Turki; Wafi shafee allah | 336h |
| 16 | power tolerance examination and improvement process |  | 3d | 2021-07-12 | 2021-07-14 | 15 | 13d | 3d |  | Mohammed; Turki; Wafi shafee allah | 72h |
| 17 | IoT |  | 40d | 2021-06-13 | 2021-08-05 |  | 1d |  | start no earlier than 2021-06-13 |  |  |
| 18 | Use Interface analysis : |  | 7d | 2021-06-13 | 2021-06-21 | 28 | 34d |  | start no earlier than 2021-06-13 | Hessa; Fatimah | 112h |
| 19 | control the arm and the body |  | 7d | 2021-06-13 | 2021-06-21 |  | 16d | 0d | start no earlier than 2021-06-13 | Fatimah; Hessa | 112h |
| 20 | connection using embedded flutter |  | 7d | 2021-06-22 | 2021-06-30 | 19 | 16d | 0d |  | Fatimah; Hessa | 112h |
| 21 | User experince testing and improvement robot system |  | 7d | 2021-07-01 | 2021-07-09 | 20 | 16d | 6d |  | Fatimah; Hessa | 112h |
| 22 | AI and robotics |  | 40d | 2021-06-13 | 2021-08-05 |  | 1d |  | start no earlier than 2021-06-13 |  |  |
| 23 | Configuration Arm |  | 7d | 2021-06-13 | 2021-06-21 | 28 | 13d | 0d | start no earlier than 2021-06-13 | Reem; Areej | 112h |
| 24 | Robot motion system for seven degrees of freedom |  | 3d | 2021-06-22 | 2021-06-24 | 23 | 13d | 0d |  | Areej; Reem | 48h |
| 25 | configuration Base |  | 7d | 2021-06-25 | 2021-07-05 | 24 | 13d | 0d |  | Areej; Reem | 112h |
| 26 | Installation |  | 7d | 2021-07-06 | 2021-07-14 | 25 | 13d | 3d |  | Areej; Reem | 112h |
| 27 | Industrial |  | 40d | 2021-06-13 | 2021-08-05 |  | 1d |  | start no earlier than 2021-06-13 |  |  |
| 28 | Planing |  | 5d | 2021-06-07 | 2021-06-12 | 2 | 13d | 0d | finish no earlier than 2021-06-12 | Dana; Fadi | 80h |
| 29 | trial the arm and body |  | 4d | 2021-07-20 | 2021-07-23 | 10, 16, 21, 26 | 10d |  | finish no earlier than 2021-07-23 | Dana; Fadi | 64h |
